# 排水工程.mpp

Schedule from MS Project, 2019-03-18 to 2019-05-01, status date 2019-03-22, costs in ¥, A marks actual dates.
排水工程
绯荤粺宸ョ▼涓�蹇�

## Calendars

- 标准: Mon-Fri 08:00-12:00, 13:00-17:00; Sat-Sun off.

## Resources

| Resource | Group | Unit | Rate | Cost per use |
| --- | --- | --- | --- | --- |
| 普通工 |  |  | 4 |  |
| 管道工1 | 管道 |  | 5 | 20 |
| 管道工2 | 管道 |  | 10 | 30 |
| 瓦工 |  |  | 5 | 20 |
| 技术员 |  |  | 12.5 |  |
| 工程师 |  |  | 25 |  |
| 挖土机 |  |  |  | 1000 |
| 管子 |  | 根 | 20 | 500 |

## Schedule

| ID | WBS | Task | Type | Duration | Start | Finish | Predecessors | Complete | Remaining | Baseline start | Baseline finish | Baseline duration | Total slack | Resources | Work | Actual work | Cost | Baseline cost | Actual cost |
| --- | --- | --- | --- | --- | --- | --- | --- | --- | --- | --- | --- | --- | --- | --- | --- | --- | --- | --- | --- |
| 1 | 1 | 放线 |  | 3d | 2019-03-18 A | 2019-03-21 A |  | 100% |  | 2019-03-18 | 2019-03-21 | 3d |  | 技术员 [25%]; 普通工 [200%] | 14h | 14h | 107 | 107 | 107 |
| 2 | 2 | **挖沟** |  | 3.83d | 2019-03-22 A | 2019-03-27 A |  | 100% |  | 2019-03-22 | 2019-03-27 | 3.83d |  |  | 120h | 120h | 2,416 | 2,416 | 2,416 |
| 3 | 2.1 | 机械挖沟 |  | 2d | 2019-03-22 A | 2019-03-25 A | 1 | 100% |  | 2019-03-22 | 2019-03-25 | 2d |  | 普通工; 挖土机 [200%] | 32h | 32h | 2,064 | 2,064 | 2,064 |
| 4 | 2.2 | 人工清沟 |  | 1.83d | 2019-03-26 A | 2019-03-27 A | 3 | 100% |  | 2019-03-26 | 2019-03-27 | 1.83d |  | 普通工 [600%] | 88h | 88h | 352 | 352 | 352 |
| 5 | 3 | **铺管** |  | 11.75d | 2019-03-27 A | 2019-04-12 |  | 2% | 11.5d | 2019-03-27 | 2019-04-12 | 11.75d | 0d |  | 248h | 4h | 3,552 | 3,552 | 1,516 |
| 6 | 3.1 | 撒管 |  | 0.5d | 2019-03-27 A | 2019-03-28 | 4, 1 | 50% | 0.25d | 2019-03-27 | 2019-03-28 | 0.5d | 0d | 普通工 [200%]; 管子 [50 根] | 8h | 4h | 1,532 | 1,532 | 1,516 |
| 7 | 3.2 | 铺设管道 |  | 1.25d | 2019-03-28 | 2019-03-29 | 6 |  |  | 2019-03-28 | 2019-03-29 | 1.25d | 0d | 管道工1 [400%]; 普通工 [400%] | 80h |  | 440 | 440 |  |
| 8 | 3.3 | 管道接口 |  | 10d | 2019-03-29 | 2019-04-12 | 7 |  |  | 2019-03-29 | 2019-04-12 | 10d | 0d | 管道工1; 管道工2 [200%]; 技术员 [50%] | 160h |  | 1,580 | 1,580 |  |
| 9 | 4 | 砌检查井 |  | 5d | 2019-04-12 | 2019-04-19 | 8 |  |  | 2019-04-12 | 2019-04-19 | 5d | 0d | 普通工 [400%]; 瓦工 [400%] | 320h |  | 1,520 | 1,520 |  |
| 10 | 5 | 闭水试验 |  | 2d | 2019-04-19 | 2019-04-23 | 9 |  |  | 2019-04-19 | 2019-04-23 | 2d | 0d | 工程师; 管道工1 [200%] | 48h |  | 600 | 600 |  |
| 11 | 6 | 回填土方 |  | 5d | 2019-04-23 | 2019-04-30 | 10 |  |  | 2019-04-23 | 2019-04-30 | 5d | 0d | 普通工 [400%]; 挖土机 | 160.4h |  | 1,640 | 1,640 |  |
| 12 | 7 | 竣工验收 |  | 1d | 2019-04-30 | 2019-05-01 | 11 |  |  | 2019-04-30 | 2019-05-01 | 1d | 0d | 工程师; 技术员 | 16h |  | 300 | 300 |  |
| 13 | 8 | 结束 | milestone | 0d | 2019-05-01 | 2019-05-01 | 12 |  |  | 2019-05-01 | 2019-05-01 | 0d | 0d |  |  |  |  |  |  |

Notes:
- 13: 验收专家组人员数不能少于5人
